# mcastfwd

Schedule from MS Project, 2004-04-21 to 2004-09-23.
SeaChange AP/ZQ

## Calendars

- 标准: Mon-Fri 08:00-12:00, 13:00-17:00; Sat-Sun off. Exceptions (off unless hours are given): 2004-05-01 to 2004-05-07, 2004-05-08 to 2004-05-09 08:00-12:00, 13:00-17:00, 2004-06-03 09:30-12:00, 12:30-18:00.

## Resources

| Resource |
| --- |
| Hui Shao |
| Kaliven Lee |
| Ashley Dong |
| Jian Shen |

## Schedule

| ID | WBS | Task | Type | Duration | Start | Finish | Predecessors | Baseline start | Baseline finish | Baseline duration | Total slack | Free slack | Constraint | Resources | Work |
| --- | --- | --- | --- | --- | --- | --- | --- | --- | --- | --- | --- | --- | --- | --- | --- |
| 1 | 1 | **McastFwd** |  | 109d? | 2004-04-21 | 2004-09-23 |  | 2004-04-21 | 2004-07-08 | 54d? | 27d |  |  |  | 173.14h |
| 2 | 1.1 | Requirement | milestone | 0d | 2004-05-07 | 2004-05-07 |  | 2004-04-30 | 2004-05-07 | 1d | 84d | 0d | finish no earlier than 2004-05-07 |  |  |
| 3 | 1.2 | Scope |  | 2d | 2004-05-08 | 2004-05-09 | 2 | 2004-05-08 | 2004-05-09 | 2d | 1d |  | finish no earlier than 2004-05-09 |  |  |
| 4 | 1.3 | Reseach |  | 10d | 2004-04-21 | 2004-05-09 |  | 2004-04-21 | 2004-05-09 | 10d | 134d |  | start no earlier than 2004-04-21 |  |  |
| 5 | 1.4 | Design and Hold Design review |  | 21d? | 2004-05-11 | 2004-06-08 | 3 | 2004-05-11 | 2004-06-08 | 21d? | 22d | 0d | start no earlier than 2004-05-11 |  |  |
| 6 | 1.5 | Maynard Provides Detail Info on SeaChange Service | milestone | 0d? | 2004-06-15 | 2004-06-15 |  | 2004-06-15 | 2004-06-15 | 0d? | 7d |  | start no earlier than 2004-06-15 |  |  |
| 7 | 1.6 | **Implement** |  | 44d? | 2004-06-09 | 2004-08-09 |  | 2004-05-10 | 2004-07-08 | 44d? | 38d |  |  |  | 89.14h |
| 8 | 1.6.1 | Invoke FtTcpComm |  | 11d | 2004-06-24 | 2004-07-08 |  | 2004-05-10 | 2004-05-11 | 2d | 14d | 0d | start no earlier than 2004-06-24 |  |  |
| 9 | 1.6.2 | Unique Tunnel Connection |  | 6d | 2004-07-09 | 2004-07-16 | 8 | 2004-06-04 | 2004-06-07 | 2d? | 61d | 0d | start no earlier than 2004-06-04 |  |  |
| 10 | 1.6.3 | XML configuration |  | 6d | 2004-06-09 | 2004-06-16 | 5 | 2004-06-09 | 2004-06-11 | 3d? | 83d | 22d |  |  |  |
| 11 | 1.6.4 | IPv4, IPv6 Listener |  | 8d | 2004-06-16 | 2004-06-25 |  | 2004-06-03 | 2004-06-04 | 2d? | 15d |  | start no earlier than 2004-06-16 |  |  |
| 12 | 1.6.5 | Ipv4,Ipv6 Resender |  | 5d | 2004-06-23 | 2004-06-29 |  | 2004-06-03 | 2004-06-03 | 1d? | 13d |  | start no earlier than 2004-06-23 |  |  |
| 13 | 1.6.6 | Wildcast Denylist |  | 5d | 2004-06-22 | 2004-06-28 |  | 2004-06-03 | 2004-06-07 | 3d? | 98d |  | start no earlier than 2004-06-22 |  |  |
| 14 | 1.6.7 | Integration Implementation |  | 8d? | 2004-07-19 | 2004-07-28 | 9, 10, 11, 12 | 2004-06-14 | 2004-06-23 | 8d? | 53d | 0d |  | Hui Shao [50%] | 32h |
| 15 | 1.6.8 | Milestone: core engine implemented | milestone | 0d | 2004-07-28 | 2004-07-28 | 14 | 2004-06-23 | 2004-06-23 | 0d | 4d | 0d |  |  |  |
| 16 | 1.6.9 | SeaChange service |  | 5d | 2004-07-29 | 2004-08-04 | 15, 6 | 2004-06-24 | 2004-07-05 | 8d? | 60d | 0d |  | Hui Shao [20%]; Kaliven Lee [75%] | 17.14h |
| 17 | 1.6.10 | Test Util implementation |  | 5d | 2004-06-15 | 2004-06-21 |  | 2004-06-03 | 2004-06-16 | 10d? | 92d | 32d | start no earlier than 2004-06-15 | Jian Shen | 40h |
| 18 | 1.6.11 | Installation |  | 3d | 2004-08-05 | 2004-08-09 | 16, 17 | 2004-07-06 | 2004-07-08 | 3d? | 60d | 7d |  |  |  |
| 19 | 1.7 | Test and Document |  | 15d | 2004-07-29 | 2004-08-18 | 14 | 2004-06-24 | 2004-07-05 | 8d | 53d | 0d |  | Ashley Dong [50%]; Hui Shao [20%] | 84h |
| 20 | 1.8 | **Conformance and Performance Test** |  | 26d? | 2004-08-19 | 2004-09-23 | 19 |  |  |  | 27d | 0d |  |  |  |
| 21 | 1.8.1 | Test plan |  | 3d? | 2004-08-19 | 2004-08-23 |  |  |  |  | 27d | 0d |  |  |  |
| 22 | 1.8.2 | Automated Script and Tools development/reseach |  | 5d? | 2004-08-24 | 2004-08-30 | 21 |  |  |  | 27d | 0d |  |  |  |
| 23 | 1.8.3 | Test enviroment |  | 5d? | 2004-08-19 | 2004-08-25 |  |  |  |  | 30d | 3d |  |  |  |
| 24 | 1.8.4 | Test cases process |  | 15d? | 2004-08-31 | 2004-09-20 | 23, 22 |  |  |  | 27d | 0d |  |  |  |
| 25 | 1.8.5 | document |  | 3d? | 2004-09-21 | 2004-09-23 | 24 |  |  |  | 27d |  |  |  |  |
| 26 | 1.9 | Project deliverables verified in Maynard | milestone | 0d | 2004-09-23 | 2004-09-23 | 19, 20 | 2004-07-08 | 2004-07-08 | 0d | 27d |  |  |  |  |

Notes:
- 2: the task was performed in Maynard, the duration was not exact
- 4: on IPv6 and loop/dup avoidance
- 9: since the service acts both client and server for the tunnel connections, it is possible that it connects to another installation but accepts a connection from the same installation. both side has the same situation, now who will has the sin to decide keep which connection while drop another
- 10: invoke the MS XML as maynard required instead of expat or xerces that have already been implemented
- 13: wildcast is currently for IPv4
- 14: will not cover the SeaChange service framework related issues
- 21: performance test plan draft based on the old test plan will be target to deliver before the conference call
- 22: mass data sender / traffic sniffer / batch job script
- 23: emulate 3+ subnets
- 24: estimated test cases: / 1. subnet numbers: 2, 3, 4 / 2. conversation numbers: 1, 5, 20, 50, 100 / 3. denylist items: 0, 10, 20, 50, 100 / 4. message length (in bytes): 100, 500, 1K, 20K / 5. CPU measuring, memory measuring / environment / switched 100 baseT / P4 1.8GHz/ 256MB
- 25: result document
