# itv-stv2

Schedule from MS Project, 2004-07-09 to 2004-11-08, A marks actual dates.
SeaChange AP/ZQ

## Calendars

- Standard: Mon-Fri 08:00-12:00, 13:00-17:00; Sat-Sun off. Exceptions (off unless hours are given): 2004-08-26, 2004-10-02 to 2004-10-03.

## Resources

| Resource |
| --- |
| Hancel Shao |
| Hui Shao |
| Maynard |
| Bernie Zhao |
| Kaliven Lee |
| Jie Zhang |
| Jian Shen |
| Kaity Yu |

## Schedule

| ID | WBS | Task | Type | Duration | Start | Finish | Predecessors | Complete | Remaining | Baseline start | Baseline finish | Baseline duration | Total slack | Free slack | Constraint | Resources | Work | Actual work |
| --- | --- | --- | --- | --- | --- | --- | --- | --- | --- | --- | --- | --- | --- | --- | --- | --- | --- | --- |
| 1 | 3 | Scope, Specification Requirement |  | 5d | 2004-07-09 | 2004-07-15 |  |  |  | 2004-07-09 | 2004-07-15 | 5d | 16.5d | 0d | finish no earlier than 2004-07-15 | Hancel Shao | 40h |  |
| 2 | 4 | [ext] equipment arrives | milestone | 0d | 2004-08-16 | 2004-08-16 |  |  |  | 2004-08-16 | 2004-08-16 | 0d | 54.19d | 0d | start no earlier than 2004-08-16 | Maynard; Kaity Yu |  |  |
| 3 | 5 | Setup Development Environment/Lab |  | 5d | 2004-08-16 | 2004-08-20 | 2 |  |  | 2004-08-16 | 2004-08-20 | 5d | 54.19d |  |  |  |  |  |
| 4 | 6 | **Design and Hold Review** |  | 30d? | 2004-07-16 A | 2004-08-27 | 1 | 52% | 14.5d? | 2004-07-16 | 2004-08-27 | 30d? | 1d | 0d |  |  | 136h | 77.2h |
| 5 | 6.A | API research and info collection |  | 15d? | 2004-07-16 A | 2004-08-05 |  | 50% | 7.5d? | 2004-07-16 | 2004-08-05 | 15d? | 9d | 0d |  | Hui Shao [50%] | 60h | 30h |
| 6 | 6.B | design doc |  | 10d? | 2004-08-06 A | 2004-08-19 | 5 | 70% | 3d? | 2004-08-06 | 2004-08-19 | 10d? | 2d | 0d |  | Hui Shao [80%] | 64h | 44.8h |
| 7 | 6.C | design review |  | 5d | 2004-08-20 A | 2004-08-27 | 6 | 20% | 4d | 2004-08-20 | 2004-08-27 | 5d | 1d |  |  | Hui Shao [30%] | 12h | 2.4h |
| 8 | 7 | **Implementation** |  | 66.19d? | 2004-07-15 A | 2004-10-18 |  | 14% | 56.98d? | 2004-07-15 | 2004-10-18 | 66.19d? | 15d |  |  |  | 539.73h | 108h |
| 9 | 7.A | **RTSP client, DNP** |  | 29d? | 2004-07-15 A | 2004-08-24 |  | 71% | 8.46d? | 2004-07-15 | 2004-08-24 | 29d? | 20d |  |  |  | 96h | 68h |
| 10 | 7.A.6 | RTSPRequest, ITV extension |  | 3d | 2004-07-15 A | 2004-07-19 A |  | 100% |  | 2004-07-15 | 2004-07-19 | 3d |  |  | start no earlier than 2004-07-15 | Bernie Zhao | 24h | 24h |
| 11 | 7.A.7 | RTSPResponse |  | 2d | 2004-07-20 A | 2004-07-22 A |  | 100% |  | 2004-07-20 | 2004-07-22 | 2d |  |  | start no earlier than 2004-07-16 | Bernie Zhao | 16h | 16h |
| 12 | 7.A.8 | RTSPClient |  | 3d | 2004-07-23 A | 2004-07-28 | 10, 11 | 50% | 1.5d | 2004-07-23 | 2004-07-28 | 3d | 37.81d | 17.81d |  | Bernie Zhao | 24h | 12h |
| 13 | 7.A.9 | Heartbeat and keep-alive |  | 2d | 2004-07-28 A | 2004-07-30 A | 12 | 100% |  | 2004-07-28 | 2004-07-30 | 2d |  |  |  | Bernie Zhao | 16h | 16h |
| 14 | 7.A.10 | unit test |  | 2d? | 2004-08-23 | 2004-08-24 | 12, 13 |  |  | 2004-08-23 | 2004-08-24 | 2d? | 20d |  | start no earlier than 2004-08-23 | Kaliven Lee | 16h |  |
| 15 | 7.B | **Playlist/Schedule management** |  | 17.19d? | 2004-08-30 | 2004-09-22 | 4 |  |  | 2004-08-30 | 2004-09-22 | 17.19d? | -4.19d | 0d |  |  | 152h |  |
| 16 | 7.B.6 | Database mirrored playlist |  | 5d | 2004-08-30 | 2004-09-03 |  |  |  | 2004-08-30 | 2004-09-03 | 5d | 1d | 0d |  | Bernie Zhao | 40h |  |
| 17 | 7.B.7 | Playlist and management |  | 4d? | 2004-09-06 | 2004-09-09 | 16 |  |  | 2004-09-06 | 2004-09-09 | 4d? | 2d |  |  | Bernie Zhao | 32h |  |
| 18 | 7.B.8 | AE List Builder (IDS API) |  | 5d | 2004-09-06 | 2004-09-13 | 16 |  |  | 2004-09-06 | 2004-09-13 | 5d | 0.81d |  | start no earlier than 2004-09-06 | Kaliven Lee | 40h |  |
| 19 | 7.B.9 | Playlist operations |  | 5d | 2004-09-13 | 2004-09-20 | 16 |  |  | 2004-09-13 | 2004-09-20 | 5d | -4.19d | 0d | start no earlier than 2004-09-13 | Bernie Zhao [80%]; Kaliven Lee [20%] | 24h |  |
| 20 | 7.B.10 | unit test | milestone | 2d | 2004-09-20 | 2004-09-22 | 17, 19, 18 |  |  | 2004-09-20 | 2004-09-22 | 2d | -4.19d | 0d |  | Bernie Zhao [80%]; Kaliven Lee [50%] | 16h |  |
| 21 | 7.C | **Fillers** |  | 7d? | 2004-09-15 | 2004-09-24 |  |  |  | 2004-09-15 | 2004-09-24 | 7d? | -1.19d | 0d |  |  | 46.4h |  |
| 22 | 7.C.5 | AutoFiller |  | 2d | 2004-09-15 | 2004-09-17 |  |  |  | 2004-09-15 | 2004-09-17 | 2d | -1.19d | 0d | start no earlier than 2004-09-15 | Kaliven Lee [70%] | 11.2h |  |
| 23 | 7.C.6 | BarkerFiller |  | 2d | 2004-09-17 | 2004-09-21 | 22 |  |  | 2004-09-17 | 2004-09-21 | 2d | -1.19d | 0d |  | Kaliven Lee [70%] | 11.2h |  |
| 24 | 7.C.7 | Playlist integration |  | 2d? | 2004-09-21 | 2004-09-23 | 22, 23, 19 |  |  | 2004-09-21 | 2004-09-23 | 2d? | -1.19d | 0d |  | Kaliven Lee | 16h |  |
| 25 | 7.C.8 | unit test | milestone | 1d | 2004-09-23 | 2004-09-24 | 24 |  |  | 2004-09-23 | 2004-09-24 | 1d | -1.19d | 0d |  | Bernie Zhao [80%]; Kaliven Lee [20%] | 8h |  |

Notes:
- 1: Hancel must define the requirement for STV on ITV, which must cover: / �what interactions are required between the external modules and the STVonITV / �what scenario should the STVonITV handle
- 3: dependent on the ITV development environment shipped from Maynard / All-in-one ITV or partner ITV
- 9: the following research topics are also included in this task: / �SETUP/PLAY in different TCP connection, identified with same session id / �get parameter call / �operate streams of multiple sessions in one single term service connection / �IP to Mac conversion / development: / �class rtsprequest / �class rtspresponse / �demo rtspclient (without stream receiver) / �
- 15: interface to external module, xml-base messaging / internal schedule management

| ID | WBS | Task | Type | Duration | Start | Finish | Predecessors | Complete | Remaining | Baseline start | Baseline finish | Baseline duration | Total slack | Free slack | Constraint | Resources | Work | Actual work |
| --- | --- | --- | --- | --- | --- | --- | --- | --- | --- | --- | --- | --- | --- | --- | --- | --- | --- | --- |
| 26 | 7.D | **Schedule Manager Interface** |  | 17d? | 2004-09-01 | 2004-09-23 |  |  |  | 2004-09-01 | 2004-09-23 | 17d? | -1d | 0d |  |  | 96h |  |
| 27 | 7.D.8 | incoming message parser |  | 1d? | 2004-09-01 | 2004-09-01 |  |  |  | 2004-09-01 | 2004-09-01 | 1d? | 9d | 1.19d | start no earlier than 2004-09-01 | Jie Zhang | 8h |  |
| 28 | 7.D.9 | outgoing message generator |  | 1d? | 2004-09-02 | 2004-09-03 |  |  |  | 2004-09-02 | 2004-09-03 | 1d? | 7.81d | 0d | start no earlier than 2004-09-02 | Jie Zhang | 8h |  |
| 29 | 7.D.10 | message dispatch and process |  | 3d? | 2004-09-03 | 2004-09-08 | 27, 28 |  |  | 2004-09-03 | 2004-09-08 | 3d? | 7.81d |  |  | Jie Zhang | 24h |  |
| 30 | 7.D.11 | [ext]SM avaliable | milestone | 0d | 2004-09-15 | 2004-09-15 |  |  |  | 2004-09-15 | 2004-09-15 | 0d | -1d | 0d | start no earlier than 2004-09-15 | Hancel Shao |  |  |
| 31 | 7.D.12 | connection to SM with failover |  | 4d? | 2004-09-15 | 2004-09-20 | 30 |  |  | 2004-09-15 | 2004-09-20 | 4d? | -1d | 0d | start no earlier than 2004-09-01 | Jie Zhang | 32h |  |
| 32 | 7.D.13 | message processor and connector integration |  | 1d? | 2004-09-21 | 2004-09-21 | 31, 29 |  |  | 2004-09-21 | 2004-09-21 | 1d? | -1d | 0d |  | Jie Zhang | 8h |  |
| 33 | 7.D.14 | unit test | milestone | 2d | 2004-09-22 | 2004-09-23 | 32 |  |  | 2004-09-22 | 2004-09-23 | 2d | -1d | 0d |  | Jie Zhang | 16h |  |
| 34 | 7.E | **StreamSession Management** |  | 31.19d | 2004-08-15 A | 2004-09-29 |  | 28% | 22.52d | 2004-08-15 | 2004-09-29 | 31.19d | 28d |  |  |  | 149.33h | 40h |
| 35 | 7.E.5 | Stream operation control |  | 2d | 2004-08-15 A | 2004-08-17 A |  | 100% |  | 2004-08-15 | 2004-08-17 | 2d |  |  |  | Hui Shao | 16h | 16h |
| 36 | 7.E.6 | Steam Event Sink |  | 3d | 2004-08-15 A | 2004-08-18 A |  | 100% |  | 2004-08-15 | 2004-08-18 | 3d |  |  |  | Hui Shao | 24h | 24h |
| 37 | 7.5.9 | Move code base and API study |  | 5d | 2004-08-24 | 2004-09-01 |  |  |  | 2004-08-24 | 2004-09-01 | 5d | 10.81d | 0d | start no earlier than 2004-08-24 | Jian Shen; Hui Shao [30%] | 45.33h |  |
| 38 | 7.E.7 | **StreamSession** |  | 17d | 2004-09-01 | 2004-09-24 | 37 |  |  | 2004-09-01 | 2004-09-24 | 17d | 10.81d |  |  |  | 40h |  |
| 39 | 7.E.7.5 | basic operations |  | 3d | 2004-09-01 | 2004-09-06 | 35 |  |  | 2004-09-01 | 2004-09-06 | 3d | 45d |  |  | Jian Shen | 24h |  |
| 40 | 7.E.7.7 | Interaction with playlist |  | 2d | 2004-09-22 | 2004-09-24 | 20 |  |  | 2004-09-22 | 2004-09-24 | 2d | -4.19d | 0d |  | Jian Shen | 16h |  |
| 41 | 7.E.8 | unit test | milestone | 3d | 2004-09-24 | 2004-09-29 | 40 |  |  | 2004-09-24 | 2004-09-29 | 3d | -4.19d | 0d |  | Jian Shen | 24h |  |
| 42 | 7.F | **Main Control and integration** |  | 13d? | 2004-09-29 | 2004-10-18 |  |  |  | 2004-09-29 | 2004-10-18 | 13d? | -4.19d | 0d |  |  |  |  |
| 43 | 7.F.3 | Main control | milestone | 10d? | 2004-09-29 | 2004-10-13 | 20, 25, 33, 41, 14 |  |  | 2004-09-29 | 2004-10-13 | 10d? | -4.19d | 0d |  |  |  |  |
| 44 | 7.F.4 | Interaction with SM | milestone | 3d? | 2004-10-13 | 2004-10-18 | 43 |  |  | 2004-10-13 | 2004-10-18 | 3d? | -4.19d | 0d |  |  |  |  |
| 45 | 7.G | Stream recovering after exceptions | milestone | 3d? | 2004-09-23 | 2004-09-28 | 14, 20, 24 |  |  | 2004-09-23 | 2004-09-28 | 3d? | 5.81d | 0d |  |  |  |  |
| 46 | 7.H | **ITV service framework** |  | 9d? | 2004-09-28 | 2004-10-11 | 9 |  |  | 2004-09-28 | 2004-10-11 | 9d? | 5.81d | 0d |  |  |  |  |
| 47 | 7.H.5 | Base integration |  | 3d? | 2004-09-28 | 2004-10-01 | 45 |  |  | 2004-09-28 | 2004-10-01 | 3d? | 5.81d | 0d |  |  |  |  |
| 48 | 7.H.6 | Configuration |  | 2d? | 2004-10-01 | 2004-10-05 | 47 |  |  | 2004-10-01 | 2004-10-05 | 2d? | 5.81d | 0d |  |  |  |  |
| 49 | 7.H.7 | Runtime ManUtil Display Info | milestone | 4d? | 2004-10-05 | 2004-10-11 | 48 |  |  | 2004-10-05 | 2004-10-11 | 4d? | 5.81d |  |  |  |  |  |
| 50 | 7.H.8 | Ineffective keep-alive service | milestone | 2d? | 2004-10-01 | 2004-10-05 | 47 |  |  | 2004-10-01 | 2004-10-05 | 2d? | 9.81d |  |  |  |  |  |

Notes:
- 34: stream operation control: / �PrimVideoStore / �Play / �FF / �Rew / �Pause / �Resume / �Stop

| ID | WBS | Task | Type | Duration | Start | Finish | Predecessors | Baseline start | Baseline finish | Baseline duration | Total slack | Free slack | Deadline |
| --- | --- | --- | --- | --- | --- | --- | --- | --- | --- | --- | --- | --- | --- |
| 51 | 8 | **Integration test** |  | 10d? | 2004-10-11 | 2004-10-25 |  | 2004-10-11 | 2004-10-25 | 10d? | -1.19d | 0d |  |
| 52 | 8.A | functionality test | milestone | 5d? | 2004-10-18 | 2004-10-25 | 42 | 2004-10-18 | 2004-10-25 | 5d? | -4.19d | 0d |  |
| 53 | 8.B | SM interaction test |  | 5d? | 2004-10-18 | 2004-10-25 | 44 | 2004-10-18 | 2004-10-25 | 5d? | -1.19d | 0d |  |
| 54 | 8.C | ITV service test |  | 3d? | 2004-10-11 | 2004-10-14 | 46 | 2004-10-11 | 2004-10-14 | 3d? | 5.81d |  |  |
| 55 | 8.D | Exception test |  | 3d? | 2004-10-11 | 2004-10-14 | 45, 46 | 2004-10-11 | 2004-10-14 | 3d? | 5.81d |  |  |
| 56 | 9 | Load test | milestone | 5d? | 2004-10-25 | 2004-11-01 | 51 | 2004-10-25 | 2004-11-01 | 5d? | -1.19d | 0d |  |
| 57 | 10 | **Documentation** |  | 10d? | 2004-10-25 | 2004-11-08 |  | 2004-10-25 | 2004-11-08 | 10d? | -4.19d | 0d |  |
| 58 | 10.A | user's manual |  | 10d? | 2004-10-25 | 2004-11-08 | 52 | 2004-10-25 | 2004-11-08 | 10d? | -4.19d | 0d |  |
| 59 | 10.B | test report archive |  | 2d? | 2004-11-01 | 2004-11-03 | 56 | 2004-11-01 | 2004-11-03 | 2d? | -1.19d | 0d |  |
| 60 | 2 | delivery | milestone | 0d | 2004-11-08 | 2004-11-08 | 51, 57 | 2004-11-08 | 2004-11-08 | 0d | -4.19d | 0d | 2004-11-01 |
