# plan

Schedule from MS Project, 2004-07-28 to 2004-09-07, A marks actual dates.
IZQ

## Calendars

- 标准: Mon-Fri 08:00-12:00, 13:00-17:00; Sat-Sun off.

## Resources

| Resource |
| --- |
| Xu |
| TBD |
| Rommy |
| Bernie |

## Schedule

| ID | WBS | Task | Duration | Start | Finish | Predecessors | Complete | Remaining | Baseline start | Baseline finish | Baseline duration | Total slack | Free slack | Constraint | Resources | Work | Actual work |
| --- | --- | --- | --- | --- | --- | --- | --- | --- | --- | --- | --- | --- | --- | --- | --- | --- | --- |
| 1 | 1 | **Existing scripts revival** | 15d? | 2004-07-28 A | 2004-08-17 |  | 74% | 3.98d? | 2004-07-26 | 2004-08-06 | 10d? | 6d | 2d |  |  |  |  |
| 2 | 1.1 | Revival of Scopio | 6d? | 2004-07-28 A | 2004-08-04 A |  | 100% |  | 2004-07-26 | 2004-07-30 | 5d? |  |  | finish no earlier than 2004-07-30 |  |  |  |
| 3 | 1.2 | Revival of Aquarius | 9d? | 2004-08-05 A | 2004-08-17 |  | 80% | 1.8d? | 2004-08-02 | 2004-08-04 | 3d? | 6d |  | finish no earlier than 2004-08-17 |  |  |  |
| 4 | 1.3 | Revival of Taurus | 5d? | 2004-08-11 A | 2004-08-17 |  | 30% | 3.5d? | 2004-08-05 | 2004-08-06 | 2d? | 6d |  | finish no earlier than 2004-08-17 |  |  |  |
| 5 | 2 | **Modelization** | 8d? | 2004-08-18 A | 2004-08-27 |  | 5% | 7.6d? | 2004-08-09 | 2004-08-10 | 2d? | 5d |  |  |  | 72h | 4h |
| 6 | 2.1 | Test case identification | 1d? | 2004-08-18 | 2004-08-18 |  |  |  | 2004-08-10 | 2004-08-10 | 1d? | 12d |  | start no earlier than 2004-08-18 | Bernie | 8h |  |
| 7 | 2.2 | Parameters arrangement | 1d? | 2004-08-19 A | 2004-08-19 |  | 50% | 0.5d? | 2004-08-09 | 2004-08-09 | 1d? | 11d |  | start no earlier than 2004-08-10 | Bernie | 8h | 4h |
| 8 | 2.3 | Base state | 2d? | 2004-08-18 | 2004-08-19 |  |  |  |  |  |  | 11d |  | finish no earlier than 2004-08-19 | Rommy | 16h |  |
| 9 | 2.4 | Framework design | 4d? | 2004-08-20 | 2004-08-25 |  |  |  |  |  |  | 7d |  | start no earlier than 2004-08-20 | Rommy | 32h |  |
| 10 | 2.5 | Frame work implementation | 1d? | 2004-08-26 | 2004-08-26 |  |  |  |  |  |  | 5d | 0d | start no earlier than 2004-08-26 | Bernie | 8h |  |
| 11 | 2.6 | Unit test | 1d? | 2004-08-27 | 2004-08-27 | 10 |  |  |  |  |  | 5d |  | start no earlier than 2004-08-20 |  |  |  |
| 12 | 3 | **Error checking and reporting enhancement** | 11d? | 2004-08-20 | 2004-09-03 | 1 |  |  |  |  |  | 0d |  |  |  | 88h |  |
| 13 | 3.1 | Report and log functions | 1d? | 2004-08-20 | 2004-08-20 |  |  |  |  |  |  | 4d | 0d | finish no earlier than 2004-08-20 | Bernie | 8h |  |
| 14 | 3.2 | Scopio enhancement | 4d? | 2004-08-26 | 2004-08-31 | 13 |  |  |  |  |  | 1d |  | finish no earlier than 2004-08-31 | Rommy | 32h |  |
| 15 | 3.3 | Taurus enhancement | 3d? | 2004-08-23 | 2004-08-25 | 13 |  |  |  |  |  | 5d |  | finish no earlier than 2004-08-25 | Bernie | 24h |  |
| 16 | 3.4 | Aquarius enhancement | 3d? | 2004-08-30 | 2004-09-01 | 13 |  |  |  |  |  | 0d |  | finish no earlier than 2004-09-01 | Bernie | 24h |  |
| 17 | 3.5 | Unit test | 2d? | 2004-09-02 | 2004-09-03 | 14, 15, 16 |  |  |  |  |  | 0d |  | finish no earlier than 2004-08-27 |  |  |  |
| 18 | 4 | **Test and documentation** | 2d? | 2004-09-06 | 2004-09-07 | 1, 5, 12 |  |  |  |  |  | 0d |  |  |  |  |  |
| 19 | 4.1 | Portability test | 1d? | 2004-09-06 | 2004-09-06 |  |  |  |  |  |  | 1d |  | finish no earlier than 2004-08-30 |  |  |  |
| 20 | 4.2 | Exception test | 2d? | 2004-09-06 | 2004-09-07 |  |  |  |  |  |  | 0d |  | finish no earlier than 2004-08-31 |  |  |  |
| 21 | 4.3 | Release notes | 2d? | 2004-09-06 | 2004-09-07 |  |  |  |  |  |  | 0d |  | finish no earlier than 2004-08-31 |  |  |  |
